# ProjectLibreVino

Schedule from ProjectLibre, 2025-10-17 to 2026-04-20.

## Calendars

- Padrão: Mon-Fri 08:00-12:00, 13:00-17:00; Sat-Sun off.

## Resources

| Resource | Rate |
| --- | --- |
| Não atribuído |  |
| Gerente do Projeto | 100.8 |
| Analista de Requisitos | 33.36 |
| Desenvolvedor Front-End | 46.54 |
| Desenvolvedor Back-End | 49.96 |
| QA | 39.48 |
| Analista Financeiro | 29.25 |
| Suporte Técnico | 19.87 |

## Schedule

| ID | WBS | Task | Duration | Start | Finish | Predecessors | Baseline start | Baseline finish | Constraint | Resources |
| --- | --- | --- | --- | --- | --- | --- | --- | --- | --- | --- |
| 1 | 1 | **Projeto Vino Bebidas** | 131.5d | 2025-10-17 | 2026-04-20 |  | 2025-10-17 | 2026-04-20 | as late as possible |  |
| 2 | 1.1 | **Planejamento Inicial** | 9d | 2025-10-17 | 2025-10-30 |  | 2025-10-17 | 2025-10-30 | as late as possible |  |
| 3 | 1.1.1 | Reunião com Cliente | 2d | 2025-10-17 | 2025-10-21 |  | 2025-10-17 | 2025-10-21 | start no earlier than 2025-04-01 | Gerente do Projeto |
| 4 | 1.1.2 | Reunião com Equipe | 2d | 2025-10-21 | 2025-10-23 | 3 | 2025-10-21 | 2025-10-23 |  | Gerente do Projeto |
| 5 | 1.1.3 | Configuração dos Canais de Comunicação | 1d | 2025-10-23 | 2025-10-24 | 4 | 2025-10-23 | 2025-10-24 |  | Suporte Técnico |
| 6 | 1.1.4 | Levantamento de Dados | 1d | 2025-10-24 | 2025-10-27 | 5 | 2025-10-24 | 2025-10-27 |  | Analista de Requisitos |
| 7 | 1.1.5 | Revisão de Viablidade | 1d | 2025-10-27 | 2025-10-28 | 6 | 2025-10-27 | 2025-10-28 |  | Analista Financeiro |
| 8 | 1.1.6 | Estimativa inicial de custos | 2d | 2025-10-28 | 2025-10-30 | 7 | 2025-10-28 | 2025-10-30 |  | Analista Financeiro |
| 9 | 1.2 | **Elaboração do Plano** | 11.5d | 2025-10-30 | 2025-11-14 | 8 | 2025-10-30 | 2025-11-14 | as late as possible |  |
| 10 | 1.2.1 | Elaboração do plano de gerenciamento | 2d | 2025-10-30 | 2025-11-03 |  | 2025-10-30 | 2025-11-03 |  | Gerente do Projeto |
| 11 | 1.2.2 | Levantamento de Requisitos | 2d | 2025-10-30 | 2025-11-03 | 10SS | 2025-10-30 | 2025-11-03 |  | Analista de Requisitos |
| 12 | 1.2.3 | Revisão de Custos | 1d | 2025-11-03 | 2025-11-04 | 11 | 2025-11-03 | 2025-11-04 |  | Analista Financeiro |
| 13 | 1.2.4 | Identificar padrões de Qualidade | 3d | 2025-11-03 | 2025-11-06 | 12SS | 2025-11-03 | 2025-11-06 |  | QA |
| 14 | 1.2.5 | Criação do cronograma | 2d | 2025-11-06 | 2025-11-10 | 13 | 2025-11-06 | 2025-11-10 |  | Gerente do Projeto |
| 15 | 1.2.6 | Análise de Tempo | 2d | 2025-11-10 | 2025-11-12 | 14 | 2025-11-10 | 2025-11-12 |  | Gerente do Projeto |
| 16 | 1.2.7 | Lista de Riscos | 0.5d | 2025-11-12 | 2025-11-12 | 15 | 2025-11-12 | 2025-11-12 |  | Gerente do Projeto; Analista de Requisitos |
| 17 | 1.2.8 | Documentação inicial do projeto | 2d | 2025-11-13 | 2025-11-14 | 16 | 2025-11-13 | 2025-11-14 |  | Analista de Requisitos |
| 18 | 1.2.9 | Aprovação do escopo com StakeHolder | 1d | 2025-11-13 | 2025-11-13 | 17SS | 2025-11-13 | 2025-11-13 |  | Gerente do Projeto |
| 19 | 1.3 | **Pré-Desenvolvimento** | 22d | 2025-11-14 | 2025-12-15 | 18 | 2025-11-14 | 2025-12-15 | as late as possible |  |
| 20 | 1.3.1 | Reunião de planejamentos | 2d | 2025-11-14 | 2025-11-17 |  | 2025-11-14 | 2025-11-17 |  | Gerente do Projeto |
| 21 | 1.3.2 | Distribuição de Tarefas | 2d | 2025-11-18 | 2025-11-19 | 20 | 2025-11-18 | 2025-11-19 |  | Gerente do Projeto |
| 22 | 1.3.3 | Criação do Plano de Gerenciamento de Projeto | 2d | 2025-11-18 | 2025-11-19 | 21SS | 2025-11-18 | 2025-11-19 |  | Analista de Requisitos |
| 23 | 1.3.4 | Criação de Documento Padrão | 2d | 2025-11-18 | 2025-11-19 | 22SS | 2025-11-18 | 2025-11-19 |  | Analista de Requisitos |
| 24 | 1.3.5 | Criação de Marca e Estilo | 10d | 2025-11-18 | 2025-12-01 | 23SS | 2025-11-18 | 2025-12-01 |  | Desenvolvedor Front-End |
| 25 | 1.3.6 | Desenvolvimento de MockUps | 10d | 2025-12-02 | 2025-12-15 | 24 | 2025-12-02 | 2025-12-15 |  | Desenvolvedor Front-End |
| 26 | 1.3.7 | Reunião de Alinhamento com cliente | 3d | 2025-12-02 | 2025-12-04 | 25SS | 2025-12-02 | 2025-12-04 |  | Gerente do Projeto |

| ID | WBS | Task | Duration | Start | Finish | Predecessors | Baseline start | Baseline finish | Constraint | Resources |
| --- | --- | --- | --- | --- | --- | --- | --- | --- | --- | --- |
| 27 | 1.4 | **Ajustes e Validações** | 4d | 2025-12-05 | 2025-12-10 | 26 | 2025-12-05 | 2025-12-10 | as late as possible |  |
| 28 | 1.4.1 | Revisão de Riscos e Cronograma | 1.8d | 2025-12-05 | 2025-12-08 |  | 2025-12-05 | 2025-12-08 |  | QA; Analista de Requisitos |
| 29 | 1.4.2 | Controle de mudanças | 1d | 2025-12-05 | 2025-12-05 | 28SS | 2025-12-05 | 2025-12-05 |  | Gerente do Projeto; Analista de Requisitos |
| 30 | 1.4.3 | Revisão de MockUps | 3d | 2025-12-05 | 2025-12-09 | 29SS | 2025-12-05 | 2025-12-09 |  | Desenvolvedor Front-End |
| 31 | 1.4.4 | Revisão de Custos | 2d | 2025-12-05 | 2025-12-08 | 30SS | 2025-12-05 | 2025-12-08 |  | Analista Financeiro |
| 32 | 1.4.5 | Reunião com Desenvolvedores | 2d | 2025-12-09 | 2025-12-10 | 31 | 2025-12-09 | 2025-12-10 |  | Gerente do Projeto |
| 33 | 1.5 | **Desenvolvimento Técnico** | 47d | 2025-12-11 | 2026-02-13 |  | 2025-12-11 | 2026-02-13 | as late as possible |  |
| 34 | 1.5.1 | Desenvolvimento de Telas | 14d | 2025-12-11 | 2025-12-30 | 32 | 2025-12-11 | 2025-12-30 |  | Desenvolvedor Front-End |
| 35 | 1.5.2 | Alinhamento com MockUps | 1d | 2025-12-31 | 2025-12-31 | 34 | 2025-12-31 | 2025-12-31 |  | Analista de Requisitos |
| 36 | 1.5.3 | Reunião de Alinhamento com cliente | 2d | 2025-12-31 | 2026-01-01 | 35SS | 2025-12-31 | 2026-01-01 | start no earlier than 2025-04-22 | Gerente do Projeto |
| 37 | 1.5.4 | Revisão de Telas | 2d | 2025-12-31 | 2026-01-01 | 36SS | 2025-12-31 | 2026-01-01 |  | QA |
| 38 | 1.5.5 | Auditoria Interna | 1d | 2026-01-02 | 2026-01-02 | 37 | 2026-01-02 | 2026-01-02 |  | QA; Analista de Requisitos |
| 39 | 1.5.6 | Reunião com Desenvolvedores | 2d | 2026-01-05 | 2026-01-06 | 38 | 2026-01-05 | 2026-01-06 |  | Gerente do Projeto |
| 40 | 1.5.7 | Desenvolvimento Back-End | 28d | 2026-01-07 | 2026-02-13 | 39 | 2026-01-07 | 2026-02-13 |  | Desenvolvedor Back-End |
| 41 | 1.5.8 | Integração Banco de Dados | 7d | 2026-01-07 | 2026-01-15 | 40SS | 2026-01-07 | 2026-01-15 |  | Desenvolvedor Back-End |
| 42 | 1.6 | **Treinamento e Padronização** | 13d | 2026-01-16 | 2026-02-03 |  | 2026-01-16 | 2026-02-03 | as late as possible |  |
| 43 | 1.6.1 | Implementação do Documento Padrão | 1d | 2026-01-16 | 2026-01-16 | 41 | 2026-01-16 | 2026-01-16 |  | QA |
| 44 | 1.6.2 | Treinamento dos Funcionários | 7d | 2026-01-19 | 2026-01-27 | 43 | 2026-01-19 | 2026-01-27 |  | Suporte Técnico |
| 45 | 1.6.3 | Revisão do Documento Padrão | 5d | 2026-01-28 | 2026-02-03 | 44 | 2026-01-28 | 2026-02-03 |  | QA |
| 46 | 1.7 | **Testes e Avaliações** | 10d | 2026-02-04 | 2026-02-17 |  | 2026-02-04 | 2026-02-17 | as late as possible |  |
| 47 | 1.7.1 | Testes de Qualidade e Funcionalidade | 3d | 2026-02-04 | 2026-02-06 | 45 | 2026-02-04 | 2026-02-06 |  | QA |
| 48 | 1.7.2 | Reunião com Cliente | 1d | 2026-02-09 | 2026-02-09 | 47 | 2026-02-09 | 2026-02-09 |  | Gerente do Projeto |
| 49 | 1.7.3 | Revisão de Riscos e Cronograma | 1d | 2026-02-10 | 2026-02-10 | 48 | 2026-02-10 | 2026-02-10 |  | Gerente do Projeto |
| 50 | 1.7.4 | Revisão BackEnd | 4d | 2026-02-11 | 2026-02-16 | 49 | 2026-02-11 | 2026-02-16 |  | Desenvolvedor Back-End |
| 51 | 1.7.5 | Reunião com StakeHolder | 1d | 2026-02-17 | 2026-02-17 | 50 | 2026-02-17 | 2026-02-17 |  | Gerente do Projeto |

| ID | WBS | Task | Duration | Start | Finish | Predecessors | Baseline start | Baseline finish | Constraint | Resources |
| --- | --- | --- | --- | --- | --- | --- | --- | --- | --- | --- |
| 52 | 1.8 | **Integração e Finalização** | 12d | 2026-02-18 | 2026-03-05 |  | 2026-02-18 | 2026-03-05 | as late as possible |  |
| 53 | 1.8.1 | Integração do Sistema | 12d | 2026-02-18 | 2026-03-05 | 51 | 2026-02-18 | 2026-03-05 |  | Desenvolvedor Back-End |
| 54 | 1.8.2 | Criação de Estimativas & Previsões | 1d | 2026-02-18 | 2026-02-18 | 53SS | 2026-02-18 | 2026-02-18 |  | Analista Financeiro |
| 55 | 1.8.3 | Funcionalidades DashBoards e Relatorios | 1.8d | 2026-02-19 | 2026-02-20 | 54 | 2026-02-19 | 2026-02-20 |  | Desenvolvedor Front-End; Desenvolvedor Back-End |
| 56 | 1.8.4 | Testes funcionais | 2d | 2026-02-19 | 2026-02-20 | 55SS | 2026-02-19 | 2026-02-20 |  | QA |
| 57 | 1.8.5 | Revisão do Escopo e Requisitos | 1d | 2026-02-23 | 2026-02-23 | 56 | 2026-02-23 | 2026-02-23 |  | Analista de Requisitos |
| 58 | 1.8.6 | Ajustes finais | 1d | 2026-02-24 | 2026-02-24 | 57 | 2026-02-24 | 2026-02-24 |  | QA |
| 59 | 1.8.7 | Apresentação Formal | 1d | 2026-02-25 | 2026-02-25 | 58 | 2026-02-25 | 2026-02-25 |  | Gerente do Projeto |
| 60 | 1.8.8 | Aprovação do Cliente | 1d | 2026-02-25 | 2026-02-25 | 59SS | 2026-02-25 | 2026-02-25 |  | Gerente do Projeto |
| 61 | 1.9 | **Implantação** | 35d | 2026-02-26 | 2026-04-15 |  | 2026-02-26 | 2026-04-15 | as late as possible |  |
| 62 | 1.9.1 | Aquisição de Computadores e Scanners | 10d | 2026-02-26 | 2026-03-11 | 60 | 2026-02-26 | 2026-03-11 |  | Analista Financeiro |
| 63 | 1.9.2 | Implementação por setores | 15d | 2026-03-12 | 2026-04-01 | 62 | 2026-03-12 | 2026-04-01 |  | Suporte Técnico |
| 64 | 1.9.3 | Treinamento por Setores | 10d | 2026-04-02 | 2026-04-15 | 63 | 2026-04-02 | 2026-04-15 |  | Suporte Técnico |
| 65 | 1.9.4 | Capacitação dos Usuários | 10d | 2026-04-02 | 2026-04-15 | 64SS | 2026-04-02 | 2026-04-15 |  | Suporte Técnico |
| 66 | 1.10 | **Finalização** | 3d | 2026-04-16 | 2026-04-20 |  | 2026-04-16 | 2026-04-20 | as late as possible |  |
| 67 | 1.10.1 | Controle de Mudanças | 2d | 2026-04-16 | 2026-04-17 | 65 | 2026-04-16 | 2026-04-17 |  | QA |
| 68 | 1.10.2 | Manutenção Mensal | 1d | 2026-04-20 | 2026-04-20 | 67 | 2026-04-20 | 2026-04-20 |  | Suporte Técnico [40%] |
